# CRONOGRAMACSBCEGHCE

Schedule from MS Project, 2016-08-04 to 2019-02-15, A marks actual dates.

## Calendars

- Standard: Mon-Fri 08:00-12:00, 13:00-17:00; Sat-Sun off. Exceptions (off unless hours are given): 2016-08-30, 2016-11-01, 2016-12-08, 2017-07-27 to 2017-07-28 (FIESTAS PATRIAS), 2017-08-30 (SANTA ROSA), 2017-11-01 (SNTOS), 2017-12-08 (INMACULADA), 2017-12-25 (NAVIDAD), 2018-01-01 (NEW YEAR).

## Resources

| Resource |
| --- |
| Team3D1 |
| Team3D2 |
| Spring Salud |

## Schedule

| ID | WBS | Task | Duration | Start | Finish | Predecessors | Complete | Remaining | Total slack | Constraint | Work | Actual work |
| --- | --- | --- | --- | --- | --- | --- | --- | --- | --- | --- | --- | --- |
| 1 | 1 | **Proyecto Historia Clínica Electrónica Fase III** | 651.6d | 2016-08-04 A | 2019-02-15 |  | 53% | 307.12d | 0d |  | 589.33h | 451.73h |
| 2 | 1.1 | **Salida Atención Ambulatoria CSB** | 141d | 2016-08-04 A | 2017-02-21 |  | 99% | 0d | 510.6d |  | 60h | 60h |
| 3 | 1.1.1 | Coordinaciones y Analisis de Integración Ambulatorio | 8d | 2016-08-04 A | 2016-08-15 A |  | 100% |  |  |  |  |  |
| 4 | 1.1.2 | **Desarrollo y Pruebas Unitarias** | 42d | 2016-08-04 A | 2016-10-03 A |  | 100% |  |  |  | 60h | 60h |
| 5 | 1.1.2.1 | **Mejoras HCE** | 14d | 2016-08-16 A | 2016-09-05 A |  | 100% |  |  |  | 60h | 60h |
| 6 | 1.1.2.1.1 | **Desarrollo** | 9d | 2016-08-16 A | 2016-08-26 A |  | 100% |  |  |  | 60h | 60h |
| 7 | 1.1.2.1.1.1 | RS_CA_US_005:Manejo de un color por Modalidad | 2d | 2016-08-16 A | 2016-08-17 A | 3 | 100% |  |  |  | 8h | 8h |
| 8 | 1.1.2.1.1.2 | RS_CA_US_006:Registrar acompañante | 2d | 2016-08-16 A | 2016-08-17 A | 3 | 100% |  |  |  | 8h | 8h |
| 9 | 1.1.2.1.1.3 | RS_CA_US_010:Copiar la historia clínica | 3d | 2016-08-18 A | 2016-08-22 A | 7 | 100% |  |  |  | 12h | 12h |
| 10 | 1.1.2.1.1.4 | RS_CA_US_013:Ajustes en el Panel de alergias | 1d | 2016-08-18 A | 2016-08-18 A | 7 | 100% |  |  |  | 4h | 4h |
| 11 | 1.1.2.1.1.5 | RS_CA_US_014:Impresión de la Historia Clínica | 3d | 2016-08-23 A | 2016-08-25 A | 9 | 100% |  |  |  | 12h | 12h |
| 12 | 1.1.2.1.1.6 | RS_CA_US_017:Manejo de formatos compartidos | 4d | 2016-08-23 A | 2016-08-26 A | 9 | 100% |  |  |  | 16h | 16h |
| 13 | 1.1.2.1.2 | Pruebas Unitarias | 14d | 2016-08-16 A | 2016-09-05 A | 3 | 100% |  |  |  |  |  |
| 14 | 1.1.2.2 | **Formatos Fijos y Análisis de Dinámicos** | 18d | 2016-08-08 A | 2016-09-01 A |  | 100% |  |  |  |  |  |
| 15 | 1.1.2.2.1 | **Desarrollo** | 12.5d | 2016-08-08 A | 2016-08-24 A |  | 100% |  |  |  |  |  |
| 16 | 1.1.2.2.1.1 | F2-ALERGIA | 1d | 2016-08-08 A | 2016-08-08 A |  | 100% |  |  | start no earlier than 2016-08-08 |  |  |
| 17 | 1.1.2.2.1.2 | F3-ANTECEDENTES PERSONALES - FISIOLOGICO | 1d | 2016-08-08 A | 2016-08-08 A |  | 100% |  |  | start no earlier than 2016-08-08 |  |  |
| 18 | 1.1.2.2.1.3 | F4-ANTECEDENTES PERSONALES - FISIOLOGICOS PEDIATRICO | 1d | 2016-08-09 A | 2016-08-09 A | 16 | 100% |  |  |  |  |  |
| 19 | 1.1.2.2.1.4 | F6-ANTECEDENTES PERSONALES - PATOLOGICOS GENERALES | 1d | 2016-08-09 A | 2016-08-09 A | 16 | 100% |  |  |  |  |  |
| 20 | 1.1.2.2.1.5 | F10-ANTECEDENTES PERSONALES - TRANSFUSIONES, CIRUGIAS Y HOSPITALIZACIONE | 1d | 2016-08-10 A | 2016-08-10 A | 18 | 100% |  |  |  |  |  |
| 21 | 1.1.2.2.1.6 | F11-ANTECEDENTES PERSONALES - EPIDEMIOLOGICO Y SOCIO ECONOMICO | 1d | 2016-08-10 A | 2016-08-10 A | 18 | 100% |  |  |  |  |  |
| 22 | 1.1.2.2.1.7 | F14-ANTECEDENTES FAMILIARE | 1d | 2016-08-11 A | 2016-08-11 A | 20 | 100% |  |  |  |  |  |
| 23 | 1.1.2.2.1.8 | F51-FUNCIONES VITALE | 1d | 2016-08-11 A | 2016-08-11 A | 20 | 100% |  |  |  |  |  |
| 24 | 1.1.2.2.1.9 | F53-EXAMEN POR REGIONES APARATOS Y SISTEMA | 1d | 2016-08-12 A | 2016-08-12 A | 22 | 100% |  |  |  |  |  |
| 25 | 1.1.2.2.1.10 | F80-EVOLUCION MEDICA | 1d | 2016-08-12 A | 2016-08-12 A | 22 | 100% |  |  |  |  |  |
| 26 | 1.1.2.2.1.11 | F90-DIAGNÓSTICO | 1d | 2016-08-15 A | 2016-08-15 A | 24 | 100% |  |  |  |  |  |
| 27 | 1.1.2.2.1.12 | F100-INDICACIÓN DE DIETA Y COMPLEMENTOS | 1d | 2016-08-15 A | 2016-08-15 A | 24 | 100% |  |  |  |  |  |
| 28 | 1.1.2.2.1.13 | F101-INDICACION DE MEDICINAS, SOLUCIONES, OTRO | 1.5d | 2016-08-16 A | 2016-08-17 A | 26 | 100% |  |  |  |  |  |
| 29 | 1.1.2.2.1.14 | F150-EXAMENES DE APOYO AL DIAGNÓSTICO - SEGUS y CP | 1d | 2016-08-16 A | 2016-08-16 A | 26 | 100% |  |  |  |  |  |
| 30 | 1.1.2.2.1.15 | F151-INTERCONSULTA | 1d | 2016-08-17 A | 2016-08-18 A | 28 | 100% |  |  |  |  |  |
| 31 | 1.1.2.2.1.16 | F153-NOTA DE INGRESO (amb y eme) | 1d | 2016-08-17 A | 2016-08-18 A | 28 | 100% |  |  |  |  |  |
| 32 | 1.1.2.2.1.17 | F154-INFORME DE APOYO AL DIAGNOSTICO | 1d | 2016-08-18 A | 2016-08-19 A | 30 | 100% |  |  |  |  |  |
| 33 | 1.1.2.2.1.18 | F204-RETIRO VOLUNTARIO | 1d | 2016-08-19 A | 2016-08-22 A | 32 | 100% |  |  |  |  |  |
| 34 | 1.1.2.2.1.19 | F300-DESCANSO MEDICO | 1.5d | 2016-08-23 A | 2016-08-24 A |  | 100% |  |  |  |  |  |
| 35 | 1.1.2.2.2 | Pruebas Unitarias Formatos Fijos | 18d | 2016-08-08 A | 2016-09-01 A |  | 100% |  |  | start no earlier than 2016-08-08 |  |  |

| ID | WBS | Task | Type | Duration | Start | Finish | Predecessors | Complete | Remaining | Total slack | Constraint |
| --- | --- | --- | --- | --- | --- | --- | --- | --- | --- | --- | --- |
| 36 | 1.1.2.3 | **Formularios Dinámicos** |  | 28d | 2016-08-04 A | 2016-09-13 A |  | 100% |  |  |  |
| 37 | 1.1.2.3.1 | **Desarrollo** |  | 22d | 2016-08-04 A | 2016-09-05 A |  | 100% |  |  |  |
| 38 | 1.1.2.3.1.1 | Necesidad de contar con bienes y servicios dentro de un formulario dinámico. |  | 10d | 2016-08-04 A | 2016-08-17 A |  | 100% |  |  |  |
| 39 | 1.1.2.3.1.2 | La edición de objetos grilla no tiene la posibilidad de crear información de listado por defecto |  | 4d | 2016-08-04 A | 2016-08-09 A |  | 100% |  |  |  |
| 40 | 1.1.2.3.1.3 | Crear un pequeño asistente de edición, que permita colocar una opción pop-up, como por ejemplo (si-no-no recuerda). |  | 8d | 2016-08-10 A | 2016-08-19 A | 39 | 100% |  |  |  |
| 41 | 1.1.2.3.1.4 | Posibilidad de crear formularios compuestos, que permita registrar el link de información y levantar el formulario en el momento del registro. |  | 10d | 2016-08-10 A | 2016-08-23 A | 39 | 100% |  |  |  |
| 42 | 1.1.2.3.1.5 | Manejar conceptos de formularios a nivel de la grilla de detalle |  | 6d | 2016-08-22 A | 2016-08-29 A | 40 | 100% |  |  |  |
| 43 | 1.1.2.3.1.6 | Necesidad de contar con operaciones lógicas de los conceptos, por lo cual se va a manejar. |  | 10d | 2016-08-22 A | 2016-09-05 A | 40 | 100% |  |  |  |
| 44 | 1.1.2.3.2 | Pruebas Unitarias Formularios Dinamicos |  | 28d | 2016-08-04 A | 2016-09-13 A |  | 100% |  |  |  |
| 45 | 1.1.2.4 | **Integración HCE/Spring CSB Spring CEG** |  | 34d | 2016-08-16 A | 2016-10-03 A |  | 100% |  |  |  |
| 46 | 1.1.2.4.1 | **Web Service Ambulatorio CSB CEG** |  | 30d | 2016-08-16 A | 2016-09-27 A |  | 100% |  |  |  |
| 47 | 1.1.2.4.1.1 | Web Service Formatos HCE consumo Spring Salud Proceso Ambulatorio |  | 25d | 2016-08-16 A | 2016-09-20 A | 3 | 100% |  |  | start no earlier than 2016-08-16 |
| 48 | 1.1.2.4.1.2 | Prueba Webservice |  | 30d | 2016-08-16 A | 2016-09-27 A |  | 100% |  |  | start no earlier than 2016-08-16 |
| 49 | 1.1.2.4.2 | **Spring Salud Ambulatorio CSB CEG** |  | 30d | 2016-08-16 A | 2016-09-27 A |  | 100% |  |  |  |
| 50 | 1.1.2.4.2.1 | Adecuaciones de Spring Salud Ambulatorio y Liquidación Expedientes |  | 25d | 2016-08-16 A | 2016-09-20 A | 3 | 100% |  |  | start no earlier than 2016-08-16 |
| 51 | 1.1.2.4.2.2 | Pruebas Spring Salud Proceso Ambulatorio |  | 30d | 2016-08-16 A | 2016-09-27 A | 3 | 100% |  |  |  |
| 52 | 1.1.2.4.3 | **Interoperabilidad Ambulatorio CSB CEG** |  | 25d | 2016-08-29 A | 2016-10-03 A |  | 100% |  |  |  |
| 53 | 1.1.2.4.3.1 | Generación de Interoperabilidad Ambulatorio |  | 20d | 2016-08-29 A | 2016-09-26 A |  | 100% |  |  | start no earlier than 2016-08-29 |
| 54 | 1.1.2.4.3.2 | Pruebas Interoperabilidad |  | 25d | 2016-08-29 A | 2016-10-03 A |  | 100% |  |  | start no earlier than 2016-08-29 |
| 55 | 1.1.3 | **Pruebas Integrales (QA)** |  | 65d | 2016-11-07 A | 2017-02-06 A |  | 100% |  |  |  |
| 56 | 1.1.3.1 | Pruebas y levantamiento de Observaciones |  | 65d | 2016-11-07 A | 2017-02-06 A |  | 100% |  |  | finish no earlier than 2017-02-06 |
| 57 | 1.1.3.2 | Instalación de Sistema en Servidores Cliente |  | 5d | 2016-12-26 A | 2016-12-30 A |  | 100% |  |  | start no earlier than 2016-11-02 |
| 58 | 1.1.3.3 | Actualización de documentación de entrega |  | 10d | 2017-01-23 A | 2017-02-03 A |  | 100% |  |  | start no earlier than 2017-01-09 |
| 59 | 1.1.4 | **Entrega Cliente** |  | 5d | 2017-02-15 A | 2017-02-21 |  | 99% | 0d | 510.6d |  |
| 60 | 1.1.4.1 | Instalación de Sistema en Servidores Cliente |  | 5d | 2017-02-15 A | 2017-02-21 A |  | 100% |  |  | start no earlier than 2017-02-15 |
| 61 | 1.1.4.2 | Acta de Conformidad de Instalación | milestone | 0d | 2017-02-21 | 2017-02-21 | 60 |  |  | 510.6d | start no earlier than 2016-11-08 |

Notes:
- 44: Desarrollar Pruebas con Formatos Dinamicos (SANNA)

| ID | WBS | Task | Duration | Start | Finish | Predecessors | Complete | Remaining | Total slack | Free slack | Constraint | Work | Actual work | Text1 |
| --- | --- | --- | --- | --- | --- | --- | --- | --- | --- | --- | --- | --- | --- | --- |
| 62 | 1.2 | **Cotización CSB CEG** | 39d | 2017-07-18 | 2017-09-13 |  |  |  | 266d | 0d |  |  |  | Colocándose estimado de Aprobacion Cot. |
| 63 | 1.2.1 | Desarrollo Cotizacion HCE | 35d | 2017-07-18 | 2017-09-07 |  |  |  | 0.8d | 0d | start no earlier than 2017-07-18 |  |  |  |
| 64 | 1.2.2 | Pruebas Cotizacion HCE | 35d | 2017-07-20 | 2017-09-11 |  |  |  | 2.8d |  | start no earlier than 2017-07-20 |  |  |  |
| 65 | 1.2.3 | Desarrollo Cotizacion Estructura | 4d | 2017-09-08 | 2017-09-13 | 63 |  |  | 0.8d |  |  |  |  |  |
| 66 | 1.2.4 | Pruebas Cotizacion Estructura | 4d | 2017-09-06 | 2017-09-11 |  |  |  | 2.8d |  | start no earlier than 2017-09-06 |  |  |  |
| 67 | 1.3 | **Etapa Cierre** | 611d | 2016-09-02 A | 2019-01-17 |  | 42% | 356.71d | 20.6d |  |  | 321.33h | 303.73h |  |
| 68 | 1.3.1 | **Desarrollo Cierre** | 611d | 2016-09-02 A | 2019-01-17 |  | 42% | 356.71d | 20.6d |  |  | 321.33h | 303.73h |  |
| 69 | 1.3.1.1 | **HCE** | 534.5d | 2016-09-06 A | 2018-10-05 |  | 77% | 122.12d | 95.1d |  |  | 321.33h | 303.73h |  |
| 70 | 1.3.1.1.1 | **Fase Desarrollo y Pruebas Desarrollo** | 534.5d | 2016-09-06 A | 2018-10-05 |  | 77% | 122.12d | 95.1d |  |  | 321.33h | 303.73h |  |
| 71 | 1.3.1.1.1.1 | **Pack de Mejoras al Proceso HCE** | 534.5d | 2016-09-06 A | 2018-10-05 | 3 | 77% | 122.12d | 95.1d |  |  | 321.33h | 303.73h |  |
| 72 | 1.3.1.1.1.1.1 | **Mejoras al Proceso HCE** | 530d | 2016-09-06 A | 2018-09-28 |  | 89% | 56.88d | 99.6d |  |  | 112h | 94.4h |  |
| 73 | 1.3.1.1.1.1.1.1 | **Desarrollo Mejoras Proceso** | 530d | 2016-09-06 A | 2018-09-28 |  | 82% | 97.17d | 99.6d |  |  | 112h | 94.4h |  |
| 74 | 1.3.1.1.1.1.1.1.1 | RS_CA_US_001:Proceso de asignación de médicos | 2d | 2016-09-06 A | 2016-09-07 A | 5 | 100% |  |  |  | start no earlier than 2016-08-08 | 8h | 8h |  |
| 75 | 1.3.1.1.1.1.1.1.2 | (POR DEFINIR) RS_CA_US_002:Manejo de exámanes agregados de caja | 2d | 2018-09-24 A | 2018-09-25 | 5 | 80% | 0.4d | 102.6d |  | start no earlier than 2016-08-08 | 8h | 6.4h |  |
| 76 | 1.3.1.1.1.1.1.1.3 | RS_CA_US_003:Link de Consentimiento informado | 1d | 2016-09-08 A | 2016-09-08 A | 74 | 100% |  |  |  | start no earlier than 2016-08-01 | 4h | 4h |  |
| 77 | 1.3.1.1.1.1.1.1.4 | RS_CA_US_004:Creación de una OA de Hospitalización | 2d | 2016-09-08 A | 2016-09-09 A | 74 | 100% |  |  |  |  | 8h | 8h |  |
| 78 | 1.3.1.1.1.1.1.1.5 | RS_CA_US_008:Manejo de la cronología de información | 3d | 2016-09-09 A | 2016-09-13 A | 76 | 100% |  |  |  |  | 12h | 12h |  |
| 79 | 1.3.1.1.1.1.1.1.6 | RS_CA_US_009:Registro de recien nacidos | 1d | 2016-09-09 A | 2016-09-09 A | 76 | 100% |  |  |  |  | 4h | 4h |  |
| 80 | 1.3.1.1.1.1.1.1.7 | (POR DEFINIR) }RS_CA_US_011:Manejo de un campo de indicador de fallecido | 1d | 2018-09-25 | 2018-09-25 | 78 |  |  | 99.6d | 0d | start no earlier than 2018-09-25 | 4h |  |  |
| 81 | 1.3.1.1.1.1.1.1.8 | RS_CA_US_012:Manejo de las unidades de medida del minsa | 2d | 2016-09-14 A | 2016-09-15 A | 78 | 100% |  |  |  |  | 8h | 8h |  |
| 82 | 1.3.1.1.1.1.1.1.9 | RS_CA_US_015:Ajustes en el manejo de la bitacora | 3d | 2016-09-15 A | 2016-09-19 A | 80 | 100% |  |  |  |  | 12h | 12h |  |
| 83 | 1.3.1.1.1.1.1.1.10 | (POR DEFINIR) RS_CA_US_016:Tratamiento de las hospitalizaciones vigentes | 3d | 2018-09-26 | 2018-09-28 | 80 |  |  | 99.6d |  |  | 12h |  |  |
| 84 | 1.3.1.1.1.1.1.1.11 | RS_CA_US_018:Obligatoriedad de registro de formatos | 2d | 2016-09-20 A | 2016-09-21 A | 82 | 100% |  |  |  |  | 16h | 16h |  |
| 85 | 1.3.1.1.1.1.1.1.12 | RS_CA_US_019:Proceso de asignación de médico tratante, de piso de interconsulta | 2d | 2016-09-20 A | 2016-09-21 A | 82 | 100% |  |  |  |  | 16h | 16h |  |
| 86 | 1.3.1.1.1.1.1.2 | Pruebas Unitarias e Integrales | 17d | 2016-09-06 A | 2016-09-28 A | 5 | 100% |  |  |  | start no earlier than 2016-08-29 |  |  |  |

| ID | WBS | Task | Duration | Start | Finish | Predecessors | Complete | Constraint | Resources | Work | Actual work |
| --- | --- | --- | --- | --- | --- | --- | --- | --- | --- | --- | --- |
| 87 | 1.3.1.1.1.1.2 | **Manejo Proceso Dispensación Medicamentos** | 93d | 2016-10-27 A | 2017-03-08 A |  | 100% |  |  | 209.33h | 209.33h |
| 88 | 1.3.1.1.1.1.2.1 | **Proceso de dispensación de medicamentos** | 87.3d | 2016-10-27 A | 2017-03-01 A |  | 100% |  |  | 209.33h | 209.33h |
| 89 | 1.3.1.1.1.1.2.1.1 | RF01:Registro, modificación y eliminación de la receta de atención, a nivel de producto. | 0.5d | 2016-10-27 A | 2016-10-27 A | 193 | 100% |  |  | 4h | 4h |
| 90 | 1.3.1.1.1.1.2.1.2 | RF02:Registro, modificación y eliminación de la receta de atención, a nivel de DCI. | 0.5d | 2016-10-27 A | 2016-10-27 A | 193 | 100% |  |  | 4h | 4h |
| 91 | 1.3.1.1.1.1.2.1.3 | RF03:Registro a nivel de ítem de las indicaciones específicas de los productos. | 0.5d | 2016-10-27 A | 2016-10-27 A | 90 | 100% |  |  | 4h | 4h |
| 92 | 1.3.1.1.1.1.2.1.4 | RF04:Registro, modificación y eliminación de la receta de atención, a nivel de producto. | 1d | 2016-10-28 A | 2016-10-28 A | 91 | 100% |  |  | 8h | 8h |
| 93 | 1.3.1.1.1.1.2.1.5 | RF05:Registro, modificación y eliminación de la receta de atención, a nivel de DCI. | 1d | 2016-10-31 A | 2016-10-31 A | 92 | 100% |  |  | 8h | 8h |
| 94 | 1.3.1.1.1.1.2.1.6 | RF06:Registro del grupo de medicamentos. | 1d | 2016-11-02 A | 2016-11-02 A | 93 | 100% |  |  | 8h | 8h |
| 95 | 1.3.1.1.1.1.2.1.7 | RF07:Registro a nivel de ítem de las indicaciones específicas a nivel de grupo. | 1d | 2016-11-03 A | 2016-11-03 A | 94 | 100% |  |  | 8h | 8h |
| 96 | 1.3.1.1.1.1.2.1.8 | RF08:Visualizar las diferentes recetas de atención agrupados por episodio de atención y paciente, ordenados de manera descendente. | 1.5d | 2016-11-04 A | 2016-11-07 A | 95 | 100% |  |  | 12h | 12h |
| 97 | 1.3.1.1.1.1.2.1.9 | RF09:Permitir generar el consolidado de pedido, por paciente, seleccionado los medicamentos a solicitar, con la posibilidad de agregar el material médico necesario para el suministro. | 0.5d | 2016-11-07 A | 2016-11-07 A | 96 | 100% |  |  | 4h | 4h |
| 98 | 1.3.1.1.1.1.2.1.10 | RF10:Generar el pedido a farmacia, permitiendo la impresión del documento para controles administrativos. | 0.5d | 2017-01-05 A | 2017-01-05 A | 97 | 100% | start no earlier than 2017-01-05 |  | 4h | 4h |
| 99 | 1.3.1.1.1.1.2.1.11 | RF11:Visualizar el listado con los diferentes pedidos de medicamentos y material médico a farmacia. | 4d | 2017-01-05 A | 2017-01-11 A | 98 | 100% |  |  | 4h | 4h |
| 100 | 1.3.1.1.1.1.2.1.12 | RF12:Permitir editar la dispensación de productos de hospitalización, editando las cantidades y especificando el lote y el almacén de despacho. | 4d | 2017-01-11 A | 2017-01-17 A | 99 | 100% |  | Spring Salud [16.7%] | 5.33h | 5.33h |
| 101 | 1.3.1.1.1.1.2.1.13 | RF13:Generar la nota de salida de productos del almacén, imprimiendo el documento para control administrativo. | 3d | 2017-01-17 A | 2017-01-20 A | 100 | 100% |  | Spring Salud [50%] | 12h | 12h |
| 102 | 1.3.1.1.1.1.2.1.14 | RF13:Generar el documento para control administrativo. | 3d | 2017-01-20 A | 2017-01-25 A | 101 | 100% |  | Spring Salud | 24h | 24h |
| 103 | 1.3.1.1.1.1.2.1.15 | RF15:Actualizar la información del kardex con la información de despacho de los productos de farmacia. | 4d | 2017-01-17 A | 2017-01-26 A | 102 | 100% |  |  | 8h | 8h |
| 104 | 1.3.1.1.1.1.2.1.16 | RF16:Permitir realizar el corte del tratamiento de un medicamento, especificando la fecha y hora de corte. | 4d | 2017-01-26 A | 2017-02-01 A | 103 | 100% |  |  | 8h | 8h |
| 105 | 1.3.1.1.1.1.2.1.17 | RF17:Permitir registrar con un indicador de check la confirmación de suministro de los productos, para lo cual se debe basar en la programación establecida. | 4d | 2017-02-01 A | 2017-02-07 A | 104 | 100% |  |  | 8h | 8h |
| 106 | 1.3.1.1.1.1.2.1.18 | RF18:Permitir registrar la devolución de productos de farmacia, realizando el registro uno a uno, especificando la cantidad a devolver. | 4d | 2017-02-07 A | 2017-02-13 A | 105 | 100% |  |  | 8h | 8h |
| 107 | 1.3.1.1.1.1.2.1.19 | RF19:Generar un número correlativo de devolución y permitir imprimirlo para un control administrativo. | 4d | 2017-02-13 A | 2017-02-17 A | 106 | 100% |  |  | 12h | 12h |
| 108 | 1.3.1.1.1.1.2.1.20 | RF20:Visualizar los productos a devolver, agrupando la información por número de devolución. | 4d | 2017-02-17 A | 2017-02-23 A | 107 | 100% |  | Spring Salud [75%] | 24h | 24h |
| 109 | 1.3.1.1.1.1.2.1.21 | RF21:Editar la información a devolver, permitiendo registrar el número de lote y almacén a ingresar. | 4d | 2017-02-23 A | 2017-03-01 A | 108 | 100% |  | Spring Salud | 32h | 32h |
| 110 | 1.3.1.1.1.1.2.2 | Pruebas Unitarias e Integrales | 38d | 2017-01-16 A | 2017-03-08 A |  | 100% | finish no earlier than 2017-03-08 |  |  |  |

| ID | WBS | Task | Duration | Start | Finish | Predecessors | Complete | Remaining | Total slack | Free slack | Constraint |
| --- | --- | --- | --- | --- | --- | --- | --- | --- | --- | --- | --- |
| 111 | 1.3.1.1.1.1.3 | **Reportes** | 404.5d | 2017-03-09 | 2018-10-05 |  |  |  | 95.1d |  |  |
| 112 | 1.3.1.1.1.1.3.1 | **Desarrollo Reportes RS_CA_US_007** | 8.5d | 2018-09-25 | 2018-10-05 |  |  |  | 95.1d |  |  |
| 113 | 1.3.1.1.1.1.3.1.1 | Reporte Plan de Trabajo Médico | 1.5d | 2018-09-25 | 2018-09-26 |  |  |  | 95.1d | 0d | start no earlier than 2018-09-25 |
| 114 | 1.3.1.1.1.1.3.1.2 | Reporte Control de Dispositivos Invasivos | 1.5d | 2018-09-26 | 2018-09-27 | 113 |  |  | 100.6d |  |  |
| 115 | 1.3.1.1.1.1.3.1.3 | Reporte Kardex de Enfermería | 2d | 2018-09-26 | 2018-09-28 | 113 |  |  | 95.1d | 0d |  |
| 116 | 1.3.1.1.1.1.3.1.4 | Reporte Plan de Cuidados de Enfermería | 1.5d | 2018-09-26 | 2018-09-27 | 113 |  |  | 100.6d |  |  |
| 117 | 1.3.1.1.1.1.3.1.5 | Reporte de Visitas de Médicos | 1.5d | 2018-09-28 | 2018-10-01 | 115 |  |  | 95.1d | 0d |  |
| 118 | 1.3.1.1.1.1.3.1.6 | Reporte de Balance HidriElectrolitico | 2d | 2018-09-28 | 2018-10-02 | 115 |  |  | 98.1d |  |  |
| 119 | 1.3.1.1.1.1.3.1.7 | Reporte Listado de Signos Vitales | 1.5d | 2018-10-02 | 2018-10-03 | 117 |  |  | 95.1d | 0d |  |
| 120 | 1.3.1.1.1.1.3.1.8 | Reporte Graficos Signos Vitales | 2d | 2018-10-02 | 2018-10-03 | 117 |  |  | 96.6d |  |  |
| 121 | 1.3.1.1.1.1.3.1.9 | Reporte IX | 2d | 2018-10-03 | 2018-10-05 | 119 |  |  | 95.1d |  |  |
| 122 | 1.3.1.1.1.1.3.1.10 | Reporte X | 2d | 2018-10-03 | 2018-10-05 | 119 |  |  | 95.1d |  |  |
| 123 | 1.3.1.1.1.1.3.2 | Pruebas Unitarias Reportes | 15d | 2017-03-09 | 2017-03-29 | 87 |  |  | 484.6d |  |  |
| 124 | 1.3.1.2 | **Formatos Nuevos** | 556.6d | 2016-09-02 A | 2018-11-02 |  | 42% | 320.46d | 75d |  |  |
| 125 | 1.3.1.2.1 | **Desarrollo Formatos** | 556.6d | 2016-09-02 A | 2018-11-02 |  | 75% | 138.97d | 75d |  |  |
| 126 | 1.3.1.2.1.1 | F5:DiseñarFormatoDeAntecedentesPersonales-GinecoObstetrico | 2d | 2016-09-02 A | 2016-09-05 A | 14 | 100% |  |  |  |  |
| 127 | 1.3.1.2.1.2 | F12:DiseñarFormatoDeAntecedentesPersonales-InmunizacionesNiñ | 2d | 2016-09-02 A | 2016-09-05 A | 14 | 100% |  |  |  |  |
| 128 | 1.3.1.2.1.3 | F13:DiseñarFormatoDeAntecedentesPersonales-InmunizacionesAdult | 2d | 2016-09-02 A | 2016-09-05 A | 14 | 100% |  |  |  |  |
| 129 | 1.3.1.2.1.4 | F15:DiseñarFormatoDeValoraciónFuncionalDelAdultoMayo | 2d | 2016-09-06 A | 2016-09-07 A | 126 | 100% |  |  |  |  |
| 130 | 1.3.1.2.1.5 | F16:DiseñarFormatoDeValoraciónMentalDelAdultoMayor | 2d | 2016-09-05 A | 2016-09-06 A | 126 | 100% |  |  |  |  |
| 131 | 1.3.1.2.1.6 | F17:DiseñarFormatoDeValoraciónSocioFamiliarDelAdultoMayo | 2d | 2016-09-05 A | 2016-09-07 A | 126 | 100% |  |  |  |  |
| 132 | 1.3.1.2.1.7 | F18:DiseñarFormatoDeValoraciónDelAdultoMayor | 2d | 2016-09-06 A | 2016-09-08 A | 129 | 100% |  |  |  |  |
| 133 | 1.3.1.2.1.8 | F152:DiseñarFormatoDeProximaCita | 2d | 2016-09-06 A | 2016-09-09 A | 129 | 100% |  |  |  |  |
| 134 | 1.3.1.2.1.9 | F200-Informe Alt | 5d | 2017-07-24 A | 2017-07-28 A |  | 100% |  |  |  | start no earlier than 2017-07-24 |
| 135 | 1.3.1.2.1.10 | F202:DiseñarFormatoDeReferenci | 2d | 2016-09-13 A | 2017-01-13 A | 133 | 100% |  |  |  |  |
| 136 | 1.3.1.2.1.11 | F203:DiseñarFormatoDeContrareferenci | 2d | 2017-01-13 A | 2017-01-16 A | 133 | 100% |  |  |  | start no earlier than 2017-01-09 |
| 137 | 1.3.1.2.1.12 | F301:DiseñarFormatoDeSolicitudTransfuciona | 2d | 2017-01-09 A | 2017-01-13 A | 172 | 100% |  |  |  | start no earlier than 2017-01-09 |
| 138 | 1.3.1.2.1.13 | F302:DiseñarFormatoDeExamenInicialDelRecienNacido1 | 2d | 2017-01-09 A | 2017-01-16 A | 172 | 100% |  |  |  | start no earlier than 2017-01-09 |
| 139 | 1.3.1.2.1.14 | F303:DiseñarFormatoDeExamenInicialDelRecienNacido2 | 2d | 2017-01-09 A | 2017-01-16 A | 172 | 100% |  |  |  | start no earlier than 2017-01-09 |
| 140 | 1.3.1.2.1.15 | Sin Explicar F323:DiseñarFormatoDeCirugia-FichaDeAnestesia | 4d | 2017-01-13 A | 2017-01-19 A | 137 | 100% |  |  |  |  |
| 141 | 1.3.1.2.1.16 | F400:DiseñarFormatoDeBalanceHidroElectrolitico | 2d | 2017-01-26 A | 2017-01-30 A | 137 | 100% |  |  |  |  |
| 142 | 1.3.1.2.1.17 | F401:DiseñarFormatoDeBalanceHidroElectroliticoEnSo | 4d | 2017-01-26 A | 2017-02-01 A | 137 | 100% |  |  |  |  |
| 143 | 1.3.1.2.1.18 | F402:DiseñarFormatoDeBalanceHidroElectroliticoEnNeonatologia | 4d | 2017-01-26 A | 2017-02-01 A | 137 | 100% |  |  |  |  |
| 144 | 1.3.1.2.1.19 | F402.1:DiseñarFormatoDeBalanceHidroElectroliticoEnPediatri | 4d | 2017-01-30 A | 2017-02-03 A | 137 | 100% |  |  |  |  |
| 145 | 1.3.1.2.1.20 | F430:DiseñarFormatoDeEvaluacionDelDolor(Eva)NeonatoPrematuro | 4d | 2017-01-30 A | 2017-02-03 A | 141 | 100% |  |  |  |  |
| 146 | 1.3.1.2.1.21 | F431:DiseñarFormatoDeEvaluacionDelDolor(Eva)Adulto | 2d | 2017-02-03 A | 2017-02-07 A | 144 | 100% |  |  |  |  |
| 147 | 1.3.1.2.1.22 | F432:DiseñarFormatoDeEvaluacionDelDolor(Eva)Niño | 2d | 2017-02-03 A | 2017-02-07 A | 144 | 100% |  |  |  |  |
| 148 | 1.3.1.2.1.23 | F435:DiseñarFormatoDeGradoDeDependenci | 2d | 2017-02-03 A | 2017-02-07 A | 144 | 100% |  |  |  |  |
| 149 | 1.3.1.2.1.24 | F440:DiseñarFormatoDeEscalaGlasgow | 4d | 2017-02-07 A | 2017-02-13 A | 146 | 100% |  |  |  |  |
| 150 | 1.3.1.2.1.25 | F441:DiseñarFormatoDeEscalaGlasgowPreEscolar | 2d | 2017-02-07 A | 2017-02-09 A | 146 | 100% |  |  |  |  |
| 151 | 1.3.1.2.1.26 | F442:DiseñarFormatoDeEscalaGlasgowLactante | 2d | 2017-02-07 A | 2017-02-09 A | 146 | 100% |  |  |  |  |
| 152 | 1.3.1.2.1.27 | F443:DiseñarFormatoDeEscalaDeNorto | 2d | 2017-02-13 A | 2017-02-15 A | 149 | 100% |  |  |  |  |
| 153 | 1.3.1.2.1.28 | F444:DiseñarFormatoDeEscalaDeAldreteModificada | 2d | 2017-02-13 A | 2017-02-15 A | 149 | 100% |  |  |  |  |
| 154 | 1.3.1.2.1.29 | F445:DiseñarFormatoDeEscalaDeStewart(Niños | 2d | 2017-02-13 A | 2017-02-15 A | 149 | 100% |  |  |  |  |
| 155 | 1.3.1.2.1.30 | F446:DiseñarFormatoDeEscalaDeBromage(ParaAnestesiaRegional | 2d | 2017-02-15 A | 2017-02-17 A | 152 | 100% |  |  |  |  |
| 156 | 1.3.1.2.1.31 | F447:DiseñarFormatoDeEscalaRamsay(Sedacion | 2d | 2017-02-15 A | 2017-02-17 A | 152 | 100% |  |  |  |  |
| 157 | 1.3.1.2.1.32 | F448:DiseñarFormatoDeEscalaRass(Sedacion | 2d | 2017-02-15 A | 2017-02-17 A | 152 | 100% |  |  |  |  |
| 158 | 1.3.1.2.1.33 | F449:DiseñarFormatoDeEscalaWoodDowne | 2d | 2017-02-17 A | 2017-02-21 A | 155 | 100% |  |  |  |  |
| 159 | 1.3.1.2.1.34 | F461:DiseñarFormatoDeListaDeVerificacionDeSeguridadEnLaCirugia-Entrada | 2d | 2017-02-17 A | 2017-02-21 A | 155 | 100% |  |  |  |  |
| 160 | 1.3.1.2.1.35 | F462:DiseñarFormatoDeListaDeVerificacionDeSeguridadEnLaCirugia-Pausa | 2d | 2017-02-21 A | 2017-02-23 A | 158 | 100% |  |  |  |  |
| 161 | 1.3.1.2.1.36 | F463:DiseñarFormatoDeListaDeVerificacionDeSeguridadEnLaCirugia-Salid | 2d | 2017-02-21 A | 2017-02-23 A | 158 | 100% |  |  |  |  |
| 162 | 1.3.1.2.1.37 | F464:DiseñarFormatoDeEscalaDeAltaEnCirugiaAmbulatoriaSpc | 2d | 2017-02-21 A | 2017-02-23 A | 158 | 100% |  |  |  |  |
| 163 | 1.3.1.2.1.38 | F5:DiseñarFormatoDeFisiológicosGinecoObstétricos | 2d | 2017-02-23 A | 2017-02-24 A | 161 | 100% |  |  |  |  |
| 164 | 1.3.1.2.1.39 | F13:DiseñarFormatoDeInmunizaciónAdulto | 2d | 2017-02-23 A | 2017-02-24 A | 160 | 100% |  |  |  |  |
| 165 | 1.3.1.2.1.40 | F14:DiseñarFormatoDeAntecedentesFamiliares | 2d | 2017-02-23 A | 2017-02-24 A | 160 | 100% |  |  |  |  |
| 166 | 1.3.1.2.1.41 | F501:DiseñarFormatoDeEvolucionDelPuerperio | 4d | 2017-02-27 A | 2017-03-02 A | 163 | 100% |  |  |  |  |
| 167 | 1.3.1.2.1.42 | F90:DiseñarFormatoDeDiagnóstic | 2d | 2017-03-03 A | 2017-03-06 A | 166 | 100% |  |  |  |  |
| 168 | 1.3.1.2.1.43 | F100:DiseñarFormatoDeIndicaciónDeDietaYComplemento | 2d | 2017-03-03 A | 2017-03-06 A | 166 | 100% |  |  |  |  |
| 169 | 1.3.1.2.1.44 | F400:DiseñarFormatoDeBalanceHidroElectrolitico | 4d | 2017-03-09 A | 2017-03-14 A | 166 | 100% |  |  |  |  |
| 170 | 1.3.1.2.1.45 | F440:DiseñarFormatoDeEscalaGlasgow | 2d | 2017-03-15 A | 2017-03-16 A | 169 | 100% |  |  |  |  |
| 171 | 1.3.1.2.1.46 | F502:DiseñarFormatoDeTocolosis,InduccionYAcentuación | 5d | 2017-08-04 A | 2017-09-14 | 62 | 80% | 1d | 266d |  | start no earlier than 2017-07-24 |
| 172 | 1.3.1.2.1.47 | Confirmacion F201-Epicrisi | 4d | 2018-09-24 | 2018-09-27 |  |  |  | 100.6d |  | start no earlier than 2018-09-24 |
| 173 | 1.3.1.2.1.48 | Falta Definir 50% F403:DiseñarFormatoDeKarde | 4d | 2018-09-28 | 2018-10-03 | 171 |  |  | 0d |  | start no earlier than 2018-09-28 |
| 174 | 1.3.1.2.1.49 | FALTA Definir F460:DiseñarFormatoDeCheckListPreOperatori | 4d | 2018-10-04 | 2018-10-09 | 173 |  |  | 92.6d |  |  |
| 175 | 1.3.1.2.1.50 | F504:DiseñarFormatoDePartograma | 4d | 2017-09-19 A | 2018-10-05 | 173 | 70% | 1.2d | 0d |  |  |
| 176 | 1.3.1.2.1.51 | DEFINIENDO F505:DiseñarFormatoDeResumenDelPart | 5d | 2018-10-05 | 2018-10-12 | 175 |  |  | 90.4d |  |  |
| 177 | 1.3.1.2.1.52 | F425:DiseñarFormatoDeSeguimientoDeDispositivosInvasivo | 4d | 2018-10-05 | 2018-10-19 | 175 |  |  | 0d |  |  |
| 178 | 1.3.1.2.1.53 | SINFORM:DiseñarFormatoDeDiagnóstico(Nanda)YPlanificación(Noc,Nic | 5d | 2017-10-09 A | 2018-10-23 | 177 | 70% | 1.5d | 83.5d |  |  |
| 179 | 1.3.1.2.1.54 | SINFORM:DiseñarFormatoDeEjecución(Nic) | 5d | 2018-10-19 | 2018-10-26 | 177 |  |  | 0d |  |  |
| 180 | 1.3.1.2.1.55 | SINFORM:DiseñarFormatoDeEvaluación(Noc,Nic | 5d | 2018-10-26 | 2018-11-02 | 179 |  |  | 75d |  |  |

Notes:
- 124: Text1: AGENDAR REUNIONES DE TRABAJO PARA DEFINIR FORMATOS
- 172: Text1: Formatos de Multiples secciones y complejidad, 1 formato se puede dividir en 3 o 5 hojas
- 173: Text1: ENFERMERIA Formatos de Multiples secciones y complejidad, 1 formato se puede dividir en 3 o 5 hojas
- 174: Text1: CENTRO QX Formatos de Multiples secciones y complejidad, 1 formato se puede dividir en 3 o 5 hojas
- 175: Text1: OBSTETRICIA
- 176: Text1: OBSTETRICIA Formatos de Multiples secciones y complejidad, 1 formato se puede dividir en 3 o 5 hojas
- 177: Text1: DEFINIR GRAFICO, SE PUEDE REALIZAR DE MANERA MANUAL
- 178: Text1: ENFERMERIA Formatos de Multiples secciones y complejidad, 1 formato se puede dividir en 3 o 5 hojas
- 179: Text1: ENFERMERIA Formatos de Multiples secciones y complejidad, 1 formato se puede dividir en 3 o 5 hojas
- 180: Text1: ENFERMERIA Formatos de Multiples secciones y complejidad, 1 formato se puede dividir en 3 o 5 hojas

| ID | WBS | Task | Duration | Start | Finish | Predecessors | Complete | Remaining | Total slack | Constraint | Work | Actual work |
| --- | --- | --- | --- | --- | --- | --- | --- | --- | --- | --- | --- | --- |
| 181 | 1.3.1.2.1.56 | SINFORM:DiseñarFormatoDeNotasDeEnfermeri | 5d | 2018-10-26 | 2018-11-02 | 179 |  |  | 0d |  |  |  |
| 182 | 1.3.1.2.2 | Pruebas Unitarias e Integrales | 208d | 2017-01-09 A | 2017-10-30 | 14 | 18% | 171.6d | 69.4d | finish no earlier than 2017-10-30 |  |  |
| 183 | 1.3.1.3 | **FACTURACIÓN Integración HCE/ Spring CSB Spring CEG** | 54d | 2018-11-05 | 2019-01-17 |  |  |  | 20.6d |  |  |  |
| 184 | 1.3.1.3.1 | **Spring Salud Emergencia Hospitalización** | 54d | 2018-11-05 | 2019-01-17 |  |  |  | 20.6d |  |  |  |
| 185 | 1.3.1.3.1.1 | Adecuaciones Emergencia Hospitalizacion CSB CEG | 25d | 2018-11-05 | 2018-12-07 |  |  |  | 49.6d | start no earlier than 2018-11-05 |  |  |
| 186 | 1.3.1.3.1.2 | Pruebas Unitarias SS | 30d | 2018-12-07 | 2019-01-17 |  |  |  | 20.6d | start no earlier than 2018-12-07 |  |  |
| 187 | 1.3.1.3.2 | **Interoperabilidad Emergencia Hospitalización** | 44d | 2018-11-05 | 2019-01-03 |  |  |  | 30.6d |  |  |  |
| 188 | 1.3.1.3.2.1 | Interoperabilidad Emergencia Hospitalizacion | 20d | 2018-11-05 | 2018-11-30 |  |  |  | 54.6d | start no earlier than 2018-11-05 |  |  |
| 189 | 1.3.1.3.2.2 | Pruebas Interoperabilidad | 25d | 2018-11-30 | 2019-01-03 |  |  |  | 30.6d | start no earlier than 2018-11-30 |  |  |
| 190 | 1.3.1.3.3 | **WebService Emergencia Hospitalización** | 44d | 2018-11-05 | 2019-01-03 |  |  |  | 30.6d |  |  |  |
| 191 | 1.3.1.3.3.1 | Web Service Emergencia Hospitalizacion | 20d | 2018-11-05 | 2018-11-30 |  |  |  | 54.6d | start no earlier than 2018-11-05 |  |  |
| 192 | 1.3.1.3.3.2 | Pruebas Web Service | 25d | 2018-11-30 | 2019-01-03 |  |  |  | 30.6d | start no earlier than 2018-11-30 |  |  |
| 193 | 1.4 | **Manejo PAE** | 612.6d | 2016-09-29 A | 2019-02-15 |  | 8% | 563.59d | 0d |  | 208h | 88h |
| 194 | 1.4.1 | **Desarrollo Manejo del PAE 1/2** | 6.5d | 2016-09-29 A | 2016-10-07 A |  | 100% |  |  |  | 88h | 88h |
| 195 | 1.4.1.1 | RF01:Registro, modificación y eliminación de los Dominios del PAE. | 1d | 2016-09-29 A | 2016-09-29 A | 72 | 100% |  |  |  | 4h | 4h |
| 196 | 1.4.1.2 | RF02:Registro, modificación y eliminación de las Clases del PAE. | 1d | 2016-09-29 A | 2016-09-29 A | 72 | 100% |  |  |  | 4h | 4h |
| 197 | 1.4.1.3 | RF03:Registro, modificación y eliminación del catálogo de diagnósticos NANDA. | 0.5d | 2016-09-30 A | 2016-09-30 A | 196 | 100% |  |  |  | 4h | 4h |
| 198 | 1.4.1.4 | RF04:Registro, modificación y eliminación del catálogo de Factores Relacionados. | 0.5d | 2016-09-30 A | 2016-09-30 A | 196 | 100% |  |  |  | 4h | 4h |
| 199 | 1.4.1.5 | RF05:Registro, modificación y eliminación del catálogo de objetivos NOC. | 0.5d | 2016-09-30 A | 2016-09-30 A | 198 | 100% |  |  |  | 4h | 4h |
| 200 | 1.4.1.6 | RF06:Registro, modificación y eliminación del catálogo de intervenciones NIC. | 0.5d | 2016-09-30 A | 2016-09-30 A | 198 | 100% |  |  |  | 4h | 4h |
| 201 | 1.4.1.7 | RF07:Registro, modificación y eliminación de las Actividades del PAE. | 0.5d | 2016-10-03 A | 2016-10-03 A | 200 | 100% |  |  |  | 4h | 4h |
| 202 | 1.4.1.8 | RF08:Registro, modificación y eliminación de los Indicadores del PAE. | 0.5d | 2016-10-03 A | 2016-10-03 A | 200 | 100% |  |  |  | 4h | 4h |
| 203 | 1.4.1.9 | RF09:Registro, modificación y eliminación de los diagnósticos NANDA con los Factores Relacionados. | 0.5d | 2016-10-03 A | 2016-10-03 A | 202 | 100% |  |  |  | 4h | 4h |
| 204 | 1.4.1.10 | RF10:Registro, modificación y eliminación de la asociación de NANDA con NOC. | 0.5d | 2016-10-03 A | 2016-10-03 A | 202 | 100% |  |  |  | 4h | 4h |
| 205 | 1.4.1.11 | RF11:Registro, modificación y eliminación de la asociación de NOC con NIC. | 0.5d | 2016-10-04 A | 2016-10-04 A | 204 | 100% |  |  |  | 4h | 4h |
| 206 | 1.4.1.12 | RF12:Registro, modificación y eliminación de la asociación de NOC con los Indicadores del PAE. | 0.5d | 2016-10-04 A | 2016-10-04 A | 204 | 100% |  |  |  | 4h | 4h |
| 207 | 1.4.1.13 | RF13:Registro, modificación y eliminación de la asociación de NIC con las Actividades del PAE. | 0.5d | 2016-10-04 A | 2016-10-04 A | 206 | 100% |  |  |  | 4h | 4h |
| 208 | 1.4.1.14 | RF14:Permitir el registro de los diagnósticos NANDA a través de la sección de bienes y servicios. | 1d | 2016-10-04 A | 2016-10-05 A | 206 | 100% |  |  |  | 8h | 8h |
| 209 | 1.4.1.15 | RF15:Permitir el registro de los Factores Relacionados, asociándolos a un diagnostico NANDA. | 2d | 2016-10-05 A | 2016-10-07 A | 208 | 100% |  |  |  | 16h | 16h |
| 210 | 1.4.1.16 | RF16:Permitir la selección de los Factor Relacionados, filtrando la información de la asociación rápida establecida con el NANDA, mostrando solo los factores que cumplan con dicha relación. | 0.5d | 2016-10-05 A | 2016-10-05 A | 208 | 100% |  |  |  | 4h | 4h |
| 211 | 1.4.1.17 | RF17:Permitir desactivar el filtro de asociación con los diagnósticos NANDA, mostrando el total de Factores Relacionados. | 0.5d | 2016-10-06 A | 2016-10-06 A | 210 | 100% |  |  |  | 4h | 4h |
| 212 | 1.4.1.18 | RF18:Permitir el registro de los objetivos NOC, asociándolos a un diagnostico NANDA. | 0.5d | 2016-10-06 A | 2016-10-06 A | 210 | 100% |  |  |  | 4h | 4h |

Notes:
- 181: Text1: ENFERMERIA Formatos de Multiples secciones y complejidad, 1 formato se puede dividir en 3 o 5 hojas

| ID | WBS | Task | Duration | Start | Finish | Predecessors | Total slack | Free slack | Constraint | Work |
| --- | --- | --- | --- | --- | --- | --- | --- | --- | --- | --- |
| 213 | 1.4.2 | **Desarrollo Manejo del PAE 2/2** | 63d | 2018-11-05 | 2019-01-30 |  | 11.6d |  |  | 120h |
| 214 | 1.4.2.1 | RF19:Permitir la selección de los objetivos NOC, filtrando la información de la asociación rápida establecida con el NANDA, mostrando solo los NOC’s que cumplan con dicha relación. | 1d | 2018-11-05 | 2018-11-05 | 181 | 11.6d | 0d | start no earlier than 2018-11-05 | 4h |
| 215 | 1.4.2.2 | RF20:Permitir desactivar el filtro de asociación con los diagnósticos NANDA, mostrando el total de objetivos NOC. | 3d | 2018-11-06 | 2018-11-08 | 214 | 11.6d | 0d | start no earlier than 2017-07-17 | 4h |
| 216 | 1.4.2.3 | RF21:Permitir el registro de los Indicadores PAE, asociándolos a un objetivo NOC. | 2d | 2018-11-09 | 2018-11-12 | 215 | 11.6d | 0d |  | 4h |
| 217 | 1.4.2.4 | RF22:Permitir la selección de los indicadores PAE, filtrando la información de la asociación rápida establecida con el NOC, mostrando solo los indicadores que cumplan con dicha relación. | 3d | 2018-11-13 | 2018-11-15 | 216 | 11.6d | 0d |  | 4h |
| 218 | 1.4.2.5 | RF23:Permitir desactivar el filtro de asociación con los objetivos NOC, mostrando el total de indicadores PAE. | 2d | 2018-11-16 | 2018-11-19 | 217 | 11.6d | 0d |  | 4h |
| 219 | 1.4.2.6 | RF24:Permitir el registro de los Intervenciones NIC, asociándolos a un objetivo NOC. | 2d | 2018-11-20 | 2018-11-21 | 218 | 11.6d | 0d |  | 4h |
| 220 | 1.4.2.7 | RF25:Permitir la selección de las intervenciones NIC, filtrando la información de la asociación rápida establecida con el NOC, mostrando solo las intervenciones NIC que cumplan con dicha relación. | 2d | 2018-11-22 | 2018-11-23 | 219 | 11.6d | 0d |  | 4h |
| 221 | 1.4.2.8 | RF26:Permitir desactivar el filtro de asociación con los objetivos NOC, mostrando el total de intervenciones NIC. | 3d | 2018-11-26 | 2018-11-28 | 220 | 11.6d | 0d |  | 4h |
| 222 | 1.4.2.9 | RF27:Permitir el registro de las Actividades PAE, asociándolos a una intervención NIC. | 2d | 2018-11-29 | 2018-11-30 | 221 | 11.6d | 0d |  | 4h |
| 223 | 1.4.2.10 | RF28:Permitir la selección de las Actividades PAE, filtrando la información de la asociación rápida establecida con la intervención NIC, mostrando solo las actividades que cumplan con dicha relación. | 3d | 2018-12-03 | 2018-12-05 | 222 | 11.6d | 0d |  | 4h |
| 224 | 1.4.2.11 | RF29:Permitir desactivar el filtro de asociación con las intervenciones NIC, mostrando el total de actividades. | 2d | 2018-12-06 | 2018-12-07 | 223 | 11.6d | 0d |  | 4h |
| 225 | 1.4.2.12 | RF30:Permitir el registro de la valoración inicial del plan de enfermería, tomando en consideración la escala de valores Liker (del 1 al 5). | 3d | 2018-12-10 | 2018-12-12 | 224 | 11.6d | 0d |  | 4h |
| 226 | 1.4.2.13 | RF31:Permitir la modificación y eliminación de los registros de valoración. | 2d | 2018-12-13 | 2018-12-14 | 225 | 11.6d | 0d |  | 4h |
| 227 | 1.4.2.14 | RF32:Permitir el registro de observaciones, como notas de enfermería. | 3d | 2018-12-17 | 2018-12-19 | 226 | 11.6d | 0d |  | 4h |
| 228 | 1.4.2.15 | RF33:Mostrar la información a manera de cross, especificando en filas las actividades configuradas y a través de columnas las 24 horas del día, con la posibilidad de avanzar y retroceder las fechas. | 2d | 2018-12-20 | 2018-12-21 | 227 | 11.6d | 0d |  | 8h |
| 229 | 1.4.2.16 | RF34:Registrar, modificar o eliminar la realización de las actividades del PAE, especificando la realización a través de un check. | 3d | 2018-12-24 | 2018-12-26 | 228 | 11.6d | 0d |  | 4h |
| 230 | 1.4.2.17 | RF35:Mostar por cada actividad el nombre de la persona que creo el registro (“Tolltip”). | 2d | 2018-12-27 | 2018-12-28 | 229 | 11.6d | 0d |  | 4h |
| 231 | 1.4.2.18 | RF36:Registrar la puntuación diaria de los indicadores registrados en el plan de enfermería, para lo cual se debe habilitar la casilla de “Puntuación Final”, para registrar los valores en base a la escala de Liker (escala del 1 al 5). | 3d | 2018-12-31 | 2019-01-02 | 230 | 11.6d | 0d |  | 8h |
| 232 | 1.4.2.19 | RF37:Permitir modificar los valores de “Puntuación Real” de la escala. | 2d | 2019-01-03 | 2019-01-04 | 231 | 11.6d | 0d |  | 4h |
| 233 | 1.4.2.20 | RF38:Mostar por cada actividad el nombre de la persona que creo el registro (“Tolltip”). | 3d | 2019-01-07 | 2019-01-09 | 232 | 11.6d | 0d |  | 4h |
| 234 | 1.4.2.21 | RF39:Permitir que el usuario de enfermería pueda cerrar el plan de atención (se debería realizar por día según el proceso), y crear un nueva versión del plan, para lo cual se debe de tomar en cuenta el plan inmediato anterior. | 2d | 2019-01-10 | 2019-01-11 | 233 | 11.6d | 0d |  | 8h |
| 235 | 1.4.2.22 | RF40:Mostrar la información del plan inmediato anterior y permitir registrar la información mediante check de selección. | 3d | 2019-01-14 | 2019-01-16 | 234 | 11.6d | 0d |  | 8h |
| 236 | 1.4.2.23 | RF41:Generar una nueva versión del plan que será la vigente sobre la cual se actualizará la información. | 2d | 2019-01-17 | 2019-01-18 | 235 | 11.6d | 0d |  | 4h |
| 237 | 1.4.2.24 | RF42:Mostrar la opción de notas de enfermería como parte del proceso de atención. | 3d | 2019-01-21 | 2019-01-23 | 236 | 11.6d | 0d |  | 4h |
| 238 | 1.4.2.25 | RF43:Poder indicar el estado del plan de enfermería, si se ejecutó o no, por defecto debe aparecer ejecutado. | 2d | 2019-01-24 | 2019-01-25 | 237 | 11.6d | 0d |  | 4h |
| 239 | 1.4.2.26 | RF44:Poder visualizar el historial de registro del PAE | 3d | 2019-01-28 | 2019-01-30 | 238 | 11.6d |  |  | 4h |
| 240 | 1.4.3 | Pruebas Unitarias e Integrales | 75d | 2018-11-02 | 2019-02-15 | 181 | 0d |  | finish no earlier than 2017-09-15 |  |
